# Project Schedule

Schedule from MS Project, 2018-01-15 to 2018-08-17.
Conestoga College

## Calendars

- Standard: Mon-Fri 08:00-12:00, 13:00-17:00; Sat-Sun off.

## Resources

| Resource |
| --- |
| All |
| Thomas |
| David |
| Stan |

## Schedule

| ID | WBS | Task | Type | Duration | Start | Finish | Predecessors | Total slack | Free slack | Constraint | Resources | Work |
| --- | --- | --- | --- | --- | --- | --- | --- | --- | --- | --- | --- | --- |
| 1 | 1 | **Air Hockey Robot** |  | 155d | 2018-01-15 | 2018-08-17 |  |  |  |  |  | 4640h |
| 2 | 1.1 | **System Engineering** |  | 110d | 2018-03-02 | 2018-08-03 |  | 86d |  |  | All | 880h |
| 3 | 1.1.1 | Requirements Freeze | milestone | 0d | 2018-03-02 | 2018-03-02 |  | 196d |  | start no earlier than 2018-03-02 |  |  |
| 4 | 1.1.2 | Manual Control | milestone | 0d | 2018-03-16 | 2018-03-16 |  | 186d |  | start no earlier than 2018-03-16 |  |  |
| 5 | 1.1.3 | Defense | milestone | 0d | 2018-04-20 | 2018-04-20 |  | 86d |  | start no earlier than 2018-04-20 |  |  |
| 6 | 1.1.4 | Offense | milestone | 0d | 2018-06-22 | 2018-06-22 |  | 41d |  | start no earlier than 2018-06-22 |  |  |
| 7 | 1.1.5 | Fully Integrated | milestone | 0d | 2018-07-20 | 2018-07-20 |  | 21d |  | start no earlier than 2018-07-20 |  |  |
| 8 | 1.1.6 | Validation Complete | milestone | 0d | 2018-08-03 | 2018-08-03 |  | 86d |  | start no earlier than 2018-08-03 |  |  |
| 9 | 1.1.7 | System Interface Design |  | 2w | 2018-03-05 | 2018-03-16 |  | 110d |  | start no earlier than 2018-03-05 |  |  |
| 10 | 1.2 | **Paddle Controller** |  | 90d | 2018-01-15 | 2018-05-18 |  | 65d |  |  | Thomas | 720h |
| 11 | 1.2.1 | Low-Speed Prototype Design & Integration |  | 50d | 2018-01-15 | 2018-03-23 |  | 180d |  | finish no earlier than 2018-03-23 |  |  |
| 12 | 1.2.2 | System Design |  | 55d | 2018-01-15 | 2018-03-30 |  | 175d |  | finish no earlier than 2018-03-30 |  |  |
| 13 | 1.2.3 | High-Speed Electro-Mechanical System Integration |  | 30d | 2018-03-19 | 2018-04-27 |  | 80d |  | finish no earlier than 2018-04-27 |  |  |
| 14 | 1.2.4 | Embedded Controller Design |  | 20d | 2018-03-19 | 2018-04-13 |  | 65d | 0d | finish no earlier than 2018-04-13 |  |  |
| 15 | 1.2.5 | Embedded Controller Integration |  | 3w | 2018-04-16 | 2018-05-04 | 14 | 140d | 0d |  |  |  |
| 16 | 1.2.6 | Position Control |  | 2w | 2018-03-05 | 2018-03-16 |  | 80d | 0d | start no earlier than 2018-03-05 |  |  |
| 17 | 1.2.7 | Velocity Control |  | 6w | 2018-03-19 | 2018-04-27 | 16 | 155d |  |  |  |  |
| 18 | 1.2.8 | Calibration and Diagnostic Development |  | 1w | 2018-05-07 | 2018-05-11 |  | 70d |  | start no earlier than 2018-05-07 |  |  |
| 19 | 1.2.9 | Safety Control |  | 1w | 2018-05-14 | 2018-05-18 | 20 | 140d |  |  |  |  |
| 20 | 1.2.10 | End of Travel Protection |  | 1w | 2018-05-07 | 2018-05-11 | 15 | 140d | 0d |  |  |  |
| 21 | 1.3 | **Puck Tracker** |  | 40d | 2018-03-05 | 2018-04-27 |  | 5d |  |  | David | 320h |
| 22 | 1.3.1 | System Design |  | 3w | 2018-03-05 | 2018-03-23 |  | 105d |  | start no earlier than 2018-03-05 |  |  |
| 23 | 1.3.2 | Object Detection |  | 2w | 2018-03-05 | 2018-03-16 |  | 5d | 0d | start no earlier than 2018-03-05 |  |  |
| 24 | 1.3.3 | Object Localization |  | 3w | 2018-03-19 | 2018-04-06 | 23 | 5d | 0d |  |  |  |
| 25 | 1.3.4 | Velocity Calculation |  | 1w | 2018-04-09 | 2018-04-13 | 24 | 5d | 0d |  |  |  |
| 26 | 1.3.5 | Calibration & Diagnostic Routines |  | 2w | 2018-04-16 | 2018-04-27 | 25 | 155d |  |  |  |  |

| ID | WBS | Task | Duration | Start | Finish | Predecessors | Total slack | Free slack | Constraint | Resources | Work |
| --- | --- | --- | --- | --- | --- | --- | --- | --- | --- | --- | --- |
| 27 | 1.4 | **Master Controller** | 115d | 2018-03-05 | 2018-08-10 |  | 5d |  |  | Stan | 1880h |
| 28 | 1.4.1 | System Design | 2w | 2018-03-05 | 2018-03-16 |  | 110d |  | start no earlier than 2018-03-05 |  |  |
| 29 | 1.4.2 | Trajectory Prediction | 1w | 2018-04-16 | 2018-04-20 | 25 | 5d | 0d |  |  |  |
| 30 | 1.4.3 | Supervisory Control | 3w | 2018-03-05 | 2018-03-23 |  | 25d | 20d | start no earlier than 2018-03-05 |  |  |
| 31 | 1.4.4 | Data Logging | 2w | 2018-03-12 | 2018-03-23 |  | 105d |  | start no earlier than 2018-03-12 |  |  |
| 32 | 1.4.5 | Control Strategy | 4mo | 2018-04-23 | 2018-08-10 | 29, 30 | 5d |  |  | Stan; Thomas [50%] | 960h |
| 33 | 1.5 | **User Interface** | 105d | 2018-03-12 | 2018-08-03 |  | 10d |  |  | David | 840h |
| 34 | 1.5.1 | System Design | 2w | 2018-04-16 | 2018-04-27 |  | 80d |  | start no earlier than 2018-04-16 |  |  |
| 35 | 1.5.2 | Visualization | 2w | 2018-05-07 | 2018-05-18 |  | 65d |  | start no earlier than 2018-05-07 |  |  |
| 36 | 1.5.3 | Manual Control | 1w | 2018-03-12 | 2018-03-16 |  | 110d |  | start no earlier than 2018-03-12 |  |  |
| 37 | 1.5.4 | Game Interface | 3mo | 2018-05-07 | 2018-07-27 |  | 15d |  | start no earlier than 2018-05-07 |  |  |
| 38 | 1.5.5 | Diagnostics Interface | 5mo | 2018-03-19 | 2018-08-03 |  | 10d |  | start no earlier than 2018-03-19 |  |  |
